# Простые-закупки

Schedule from MS Project, 2012-03-01 to 2012-03-16, A marks actual dates.
HOME

## Calendars

- Стандартный: Mon-Fri 09:00-13:00, 14:00-18:00; Sat-Sun off.

## Resources

| Resource | Notes |
| --- | --- |
| Аносов А.С. | Руководитель проекта |
| Барабанов Олег | Программист |

## Schedule

| ID | WBS | Task | Duration | Start | Finish | Predecessors | Complete | Remaining | Total slack | Constraint | Resources | Work | Actual work |
| --- | --- | --- | --- | --- | --- | --- | --- | --- | --- | --- | --- | --- | --- |
| 1 | 1 | **Исходные шаблоны сайта** | 4d | 2012-03-01 A | 2012-03-06 |  | 87% | 0.51d | 7d |  | Аносов А.С. | 72h | 42.17h |
| 2 | 1.1 | **Базовый шаблон** | 1d | 2012-03-01 A | 2012-03-01 A |  | 100% |  |  |  |  | 32h | 32h |
| 3 | 1.1.1 | 1 колонка | 1d | 2012-03-01 A | 2012-03-01 A |  | 100% |  |  |  | Аносов А.С. | 8h | 8h |
| 4 | 1.1.2 | 2 колонки - левая и центр | 1d | 2012-03-01 A | 2012-03-01 A |  | 100% |  |  |  | Аносов А.С. | 8h | 8h |
| 5 | 1.1.3 | 2 колонки - центр и правая | 1d | 2012-03-01 A | 2012-03-01 A |  | 100% |  |  |  | Аносов А.С. | 8h | 8h |
| 6 | 1.1.4 | 3 колонки | 1d | 2012-03-01 A | 2012-03-01 A |  | 100% |  |  |  | Аносов А.С. | 8h | 8h |
| 7 | 1.2 | Главное меню | 1d | 2012-03-02 A | 2012-03-02 |  | 70% | 0.3d | 9d |  | Аносов А.С. | 8h | 5.6h |
| 8 | 1.3 | Авторизация | 1d | 2012-03-05 A | 2012-03-05 |  | 90% | 0.1d | 9d |  |  |  |  |
| 9 | 1.4 | Меню пользователя | 1d | 2012-03-06 A | 2012-03-06 |  | 50% | 0.5d | 7d |  |  |  |  |
| 10 | 2 | **main.html** | 1d | 2012-03-07 A | 2012-03-07 | 6 | 90% | 0.1d | 7d |  |  | 16h | 14.4h |
| 11 | 2.1 | maincolumn | 1d | 2012-03-07 A | 2012-03-07 |  | 80% | 0.2d | 6d |  | Аносов А.С. | 8h | 6.4h |
| 12 | 2.2 | def main(request) | 1d | 2012-03-07 A | 2012-03-07 A |  | 100% |  |  |  | Барабанов Олег | 8h | 8h |
| 13 | 3 | **registration.html** | 2d | 2012-03-08 A | 2012-03-09 | 4 | 30% | 1.4d | 5d |  |  | 24h | 7.2h |
| 14 | 3.1 | maincolumn | 1d | 2012-03-08 A | 2012-03-08 |  | 90% | 0.1d | 6d |  | Аносов А.С. | 8h | 7.2h |
| 15 | 3.2 | def registration(request) | 2d | 2012-03-08 | 2012-03-09 |  |  |  | 5d | start no earlier than 2012-03-08 | Барабанов Олег | 16h |  |
| 16 | 4 | **purchese.html** | 1d | 2012-03-09 | 2012-03-09 | 4 |  |  | 5d |  |  | 8h |  |
| 17 | 4.1 | maincolumn | 1d | 2012-03-09 | 2012-03-09 |  |  |  | 5d | start no earlier than 2012-03-09 |  |  |  |
| 18 | 4.2 | def purchase_type_list(request) | 1d | 2012-03-09 | 2012-03-09 |  |  |  | 5d | start no earlier than 2012-03-09 | Барабанов Олег | 8h |  |
| 19 | 5 | **purchese.html** | 3d? | 2012-03-14 | 2012-03-16 | 4 |  |  | 0d |  |  | 32h |  |
| 20 | 5.1 | maincolumn | 1d? | 2012-03-14 | 2012-03-14 |  |  |  | 2d | start no earlier than 2012-03-14 | Аносов А.С. | 8h |  |
| 21 | 5.2 | def purchase_list(request, purchase_type, category_id) | 3d? | 2012-03-14 | 2012-03-16 |  |  |  | 0d | start no earlier than 2012-03-14 | Барабанов Олег | 24h |  |

Notes:
- 2: base.html - базовый (родительский) шаблон для всех страниц сайта
- 3: base1.html - наследник базового шаблона, основной контент сайта расположен на всю ширину страницы
- 4: base2l.html - наследник базового шаблона, слева столбец и основной контент сайта расположен центре
- 5: base2r.html - наследник базового шаблона, основной контент сайта расположен центре и столбец справа
- 6: base3.html - наследник базового шаблона, столбец слева, основной контент сайта расположен центре и столбец справа
- 7: main_menu.html - шаблон главного меню
- 8: auth.html - шаблон формы авторизации пользователей
- 9: user_menu.html - шаблон меню пользователя
- 10: Главная страница сайта. / Ссылка: / url('^$', 'main', name="main")
- 11: Тест приветсвия и описания сайта.
- 12: first_site.views.py
- 13: Страница регистрации пользователя. / Ссылка: / url('^registration/$', 'registration', name="registration")
- 14: Шаблон формы регистрации. / django.contrib.auth.models.User / Список переменных: / user_name - логин; / password1 - пароль; / password2 - пароль еще раз, проверка на совпадение; / email - электронная почта; / first_name - имя; / last_name - фамилия; / phone - мобильный телефон;
- 15: first_site.views.py / На основе данных шаблона, проверить: / ·Уникальность логина / ·Совпадение введеных паролей / ·Правильность введения электронной почты и мобильного телфона, на основе регулярных выражений. / ·Обязательность заполнения полей на основе модели. / В случае правильности данных, добавить пользователя, авторизовать и перенаправить на главную страницу: / % url main %
- 16: Информационная страница по типам закупок с их детальным описанием / Ссылка: / url('^purchase/$', 'purchase_type_list', name="purchase_type_list")
- 17: Шаблон описания закупок по их разновидности. / Переменные шаблона: / type_list - список всех объектов PurchaseType
- 18: first_site.eshop.views.py
- 19: Информационная страница по выбранному типу закупки с его описанием, и списком доступных закупок, в соответсвии с выбранной категорией товаров / Ссылка: / url('^purchase(?P<purchase_type>0,1)/category(?P<category_id>1,2)/$', 'purchase_list', name="purchase_list")
- 20: Шаблон описания закупок по их разновидности. / Переменные шаблона: / purchase_type - объект типа PurchaseType. / purchase_list - список со столбцами: / ·purchase - объект типа Purchase. / ·purchase_percent - вещественное поле, для каждой закупки смысл которого следующий: SUM(Order.sum)/Purchase.minimal_sum - показывает процент сбора закупки, суммируя заказы по закупке, по отношению к минимальной сумме закупке. При этом важно учитывать номер жизненного цикла, дабы не суммировать строки, ранее уже собранных закупок.
- 21: first_site.eshop.views.py
